# Menta 0.3 research

Schedule from GanttProject, 2012-01-16 to 2012-02-17.
Research project to automate the incident handling.

## Calendars

- Project calendar: Mon-Fri working; Sat-Sun off.

## Resources

| Resource | Group |
| --- | --- |
| Max | Architect |
| Alex | Team lead |
| Adel | Developer |
| Bulat | Developer |
| Renat | Developer |
| Artem | Developer |

## Schedule

| ID | WBS | Task | Type | Duration | Start | Finish | Predecessors | Resources |
| --- | --- | --- | --- | --- | --- | --- | --- | --- |
| 1 | 1 | **Analysis** |  | 15d | 2012-01-16 | 2012-02-03 |  |  |
| 2 | 1.1 | Incidents |  | 13d | 2012-01-16 | 2012-02-01 |  | Artem; Renat; Adel [50%]; Max [50%]; Bulat; Alex [50%] |
| 3 | 1.2 | Workbook articles |  | 15d | 2012-01-16 | 2012-02-03 |  | Adel; Max; Alex |
| 4 | 2 | **Design Emotion Machine** |  | 19d | 2012-01-23 | 2012-02-16 |  |  |
| 5 | 2.1 | Inbound textual description |  | 1d | 2012-01-23 | 2012-01-23 |  | Alex |
| 6 | 2.2 | Internal knowledge(atom) representations |  | 4d | 2012-01-23 | 2012-01-26 |  | Max |
| 7 | 2.3 | Formalization outbound structures |  | 3d | 2012-01-27 | 2012-01-31 | 6 | Max |
| 8 | 2.4 | Design Solution HowTo-s |  | 1d | 2012-01-24 | 2012-01-24 | 5 | Alex |
| 9 | 2.5 | Design Critics |  | 6d | 2012-02-01 | 2012-02-08 | 7 | Max |
| 10 | 2.6 | Design Selector |  | 6d | 2012-01-25 | 2012-02-01 | 8 | Alex |
| 11 | 2.7 | Design Way2Think |  | 6d | 2012-02-09 | 2012-02-16 | 9 | Max |
| 12 | 3 | Analysis and design | milestone | 0d | 2012-02-17 | 2012-02-17 | 1, 4 | Alex |
